How a schedule from an exported table changed from version to version. A marks actual dates.

## Version 1 (saved 2026-10-30)

Note of the change: v0.4.0: MVP, evaluation set, UAT

| ID | Task | Start | Finish |
| --- | --- | --- | --- |
| T1 | Business problem & product brief | 2026-10-29 | 2026-10-29 |
| T2 | Dataset selection & profiling | 2026-10-30 | 2026-10-30 |
| T3 | MVP scope & BRD | 2026-10-30 | 2026-10-30 |
| M1 | Requirements reviewed by mentor | 2026-10-30 | 2026-10-30 |
| T4 | Architecture & decision log | 2026-10-30 | 2026-10-30 |
| T5 | Model selection (test 2 models on 20 reviews) | 2026-11-02 | 2026-11-02 |
| T6 | Data structure + output schema + taxonomy.yaml | 2026-11-02 | 2026-11-02 |
| T7 | Prompt v1 | 2026-11-03 | 2026-11-03 |
| T8 | UI wireframe | 2026-11-03 | 2026-11-03 |
| M2 | Design complete | 2026-11-03 | 2026-11-03 |
| T9 | CSV upload & validation | 2026-11-04 | 2026-11-04 |
| T10 | Redaction & batching | 2026-11-04 | 2026-11-04 |
| T11 | AI integration (LLM calls + schema check + retry) | 2026-11-05 | 2026-11-05 |
| T12 | Analysis engine (counts + ranking + quotes + baseline) | 2026-11-06 | 2026-11-06 |
| T13 | Dashboard + evidence display + export | 2026-11-09 | 2026-11-10 |
| M3 | MVP feature-complete | 2026-11-10 | 2026-11-10 |
| T14 | Build evaluation set (hand-label 50 reviews) | 2026-11-03 | 2026-11-04 |
| T15 | Test classification & sentiment | 2026-11-11 | 2026-11-11 |
| T17 | Measure latency & cost | 2026-11-11 | 2026-11-11 |
| T16 | Failure analysis + prompt v2 + re-test | 2026-11-12 | 2026-11-12 |
| M4 | Quality gate (≥85% accuracy) | 2026-11-12 | 2026-11-12 |
| T18 | Functional testing | 2026-11-11 | 2026-11-11 |
| T19 | UAT (cases + run) | 2026-11-13 | 2026-11-13 |
| T20 | Bug fixing | 2026-11-16 | 2026-11-16 |
| M5 | UAT sign-off | 2026-11-16 | 2026-11-16 |
| T21 | Deploy MVP (Streamlit Cloud) | 2026-11-16 | 2026-11-16 |
| M6 | MVP live | 2026-11-16 | 2026-11-16 |
| T22 | User testing (2–3 people) | 2026-11-17 | 2026-11-17 |
| T23 | Collect feedback + define next iteration | 2026-11-18 | 2026-11-18 |
| M7 | Portfolio package complete | 2026-11-18 | 2026-11-18 |

## Version 2 (saved 2026-11-05)

Note of the change: Client-focused documents after mentor review (CR-19)

Last finish stays 2026-11-18.

Added:

| ID | Task | Start | Finish |
| --- | --- | --- | --- |
| C1 | Client requirements review | 2026-11-05 | 2026-11-09 |
| C2 | Prototype review and demo | 2026-11-10 | 2026-11-10 |
| C3 | Business UAT with pilot PMs | 2026-11-11 | 2026-11-12 |
| C4 | Security review: privacy and AI provider | 2026-11-09 | 2026-11-11 |
| T24 | Fix business UAT findings | 2026-11-13 | 2026-11-13 |
| M8 | Go-live approved for business use | 2026-11-16 | 2026-11-16 |
| C5 | Handover to client | 2026-11-17 | 2026-11-18 |
| M9 | Handover accepted | 2026-11-18 | 2026-11-18 |

Removed: T19 UAT (cases + run)

Changed:

| ID | Task | Start | Finish | Other |
| --- | --- | --- | --- | --- |
| M1 | Requirements approved | 2026-10-30 → 2026-11-09 (+10d) | 2026-10-30 → 2026-11-09 (+10d) | was named Requirements reviewed by mentor |
| T5 | Model selection | 2026-11-02 → 2026-10-31 (-2d) | 2026-11-02 → 2026-10-31 (-2d) | was named Model selection (test 2 models on 20 reviews) |
| T6 | Data structure + output schema + taxonomy | 2026-11-02 → 2026-10-30 (-3d) | 2026-11-02 → 2026-10-30 (-3d) | was named Data structure + output schema + taxonomy.yaml |
| T7 | Prompt v1 | 2026-11-03 → 2026-10-30 (-4d) | 2026-11-03 → 2026-10-30 (-4d) |  |
| T8 | UI wireframe | 2026-11-03 → 2026-10-30 (-4d) | 2026-11-03 → 2026-10-30 (-4d) |  |
| M2 | Design complete | 2026-11-03 → 2026-10-30 (-4d) | 2026-11-03 → 2026-10-30 (-4d) |  |
| T9 | CSV upload & validation | 2026-11-04 → 2026-10-30 (-5d) | 2026-11-04 → 2026-10-30 (-5d) |  |
| T10 | Redaction & batching | 2026-11-04 → 2026-10-30 (-5d) | 2026-11-04 → 2026-10-30 (-5d) |  |
| T11 | AI integration (LLM calls + schema check + retry) | 2026-11-05 → 2026-10-30 (-6d) | 2026-11-05 → 2026-10-31 (-5d) |  |
| T12 | Analysis engine (counts + ranking + quotes + baseline) | 2026-11-06 → 2026-10-30 (-7d) | 2026-11-06 → 2026-10-30 (-7d) |  |
| T13 | Dashboard + evidence display + export | 2026-11-09 → 2026-10-30 (-10d) | 2026-11-10 → 2026-11-01 (-9d) |  |
| M3 | MVP feature-complete | 2026-11-10 → 2026-10-30 (-11d) | 2026-11-10 → 2026-10-30 (-11d) |  |
| T14 | Build evaluation set (hand-label 50 reviews) | 2026-11-03 → 2026-10-30 (-4d) | 2026-11-04 → 2026-10-30 (-5d) |  |
| T15 | Test classification & sentiment | 2026-11-11 → 2026-10-31 (-11d) | 2026-11-11 → 2026-10-31 (-11d) |  |
| T17 | Measure speed & cost | 2026-11-11 → 2026-10-31 (-11d) | 2026-11-11 → 2026-10-31 (-11d) | was named Measure latency & cost |
| T16 | Failure analysis + prompt v3 + re-test | 2026-11-12 → 2026-10-31 (-12d) | 2026-11-12 → 2026-10-31 (-12d) | was named Failure analysis + prompt v2 + re-test |
| M4 | Quality gate (≥85% accuracy) | 2026-11-12 → 2026-10-31 (-12d) | 2026-11-12 → 2026-10-31 (-12d) |  |
| T18 | System & AI testing (25 cases) | 2026-11-11 → 2026-10-30 (-12d) | 2026-11-11 → 2026-10-31 (-11d) | was named Functional testing |
| T20 | Fix system-test defects | 2026-11-16 → 2026-10-31 (-16d) | 2026-11-16 → 2026-11-01 (-15d) | was named Bug fixing |
| T21 | Deploy to Streamlit Cloud (demo link) | 2026-11-16 → 2026-11-01 (-15d) | 2026-11-16 → 2026-11-01 (-15d) | was named Deploy MVP (Streamlit Cloud) |
| M6 | Demo link live | 2026-11-16 → 2026-11-01 (-15d) | 2026-11-16 → 2026-11-01 (-15d) | was named MVP live |
| T22 | User testing with pilot PMs |  |  | was named User testing (2–3 people) |
